# Project_Schedule_rev_2

Schedule from MS Project, 2014-09-29 to 2014-12-12, A marks actual dates.
Toshiba

## Calendars

- Standard: Mon-Sun 08:00-12:00, 13:00-17:00. Exceptions (off unless hours are given): 2014-10-11 to 2014-10-12 08:00-12:00, 13:00-17:00, 2014-10-18 08:00-12:00, 13:00-17:00, 2014-10-25 to 2014-10-26 08:00-12:00, 13:00-17:00, 2014-11-01 to 2014-11-02 08:00-12:00, 13:00-17:00, 2014-11-08 to 2014-11-09 08:00-12:00, 13:00-17:00, 2014-11-15 to 2014-11-16 08:00-12:00, 13:00-17:00, 2014-11-22 to 2014-11-23 08:00-12:00, 13:00-17:00.

## Resources

| Resource |
| --- |
| Chris |
| Kyle |
| Michael |
| Matt |

## Schedule

| ID | WBS | Task | Type | Duration | Start | Finish | Predecessors | Complete | Remaining | Actual start | Total slack | Free slack | Constraint | Resources | Work | Actual work |
| --- | --- | --- | --- | --- | --- | --- | --- | --- | --- | --- | --- | --- | --- | --- | --- | --- |
| 1 | 1 | **Wireless Apparatus for Real-Time Classroom feedback** |  | 75d | 2014-09-29 | 2014-12-12 |  | 53% | 35d | 2014-10-09 |  |  |  |  | 1824h | 1016h |
| 2 | 1.1 | **Project Documentation** |  | 57d | 2014-10-09 A | 2014-12-04 |  | 63% | 21d |  |  |  |  |  | 376h | 248h |
| 3 | 1.1.1 | **Project Proposal** |  | 5d? | 2014-10-09 A | 2014-10-13 A |  | 100% |  |  |  |  |  |  | 64h | 64h |
| 4 | 1.1.1.1 | Write Project Proposal |  | 3d | 2014-10-09 A | 2014-10-11 A |  | 100% |  |  |  |  | start no earlier than 2014-10-09 | Chris; Kyle | 48h | 48h |
| 5 | 1.1.1.2 | Review Project Proposal | milestone | 0d | 2014-10-12 A | 2014-10-12 A | 4 | 100% |  |  |  |  | start no earlier than 2014-10-12 | Chris; Kyle; Michael; Matt |  |  |
| 6 | 1.1.1.3 | Revise Project Proposal |  | 1d? | 2014-10-13 A | 2014-10-13 A | 5 | 100% |  |  |  |  | finish no earlier than 2014-10-13 | Chris; Kyle | 16h | 16h |
| 7 | 1.1.1.4 | Submit Project Proposal | milestone | 0d | 2014-10-13 A | 2014-10-13 A | 6 | 100% |  |  |  |  | start no earlier than 2014-10-13 | Chris; Kyle; Matt; Michael |  |  |
| 8 | 1.1.2 | **Project Design Specifications** |  | 5d? | 2014-10-23 A | 2014-10-27 A |  | 100% |  |  |  |  |  |  | 160h | 160h |
| 9 | 1.1.2.1 | Write Project Design Specifications |  | 3d? | 2014-10-23 A | 2014-10-25 A |  | 100% |  |  |  |  | start no earlier than 2014-10-23 | Chris; Kyle; Matt; Michael | 96h | 96h |
| 10 | 1.1.2.2 | Review Project Design Specifications |  | 1d? | 2014-10-26 A | 2014-10-26 A | 9 | 100% |  |  |  |  | start no earlier than 2014-10-26 | Chris; Kyle; Matt; Michael | 32h | 32h |
| 11 | 1.1.2.3 | Revise Project Design Specifications |  | 1d? | 2014-10-27 A | 2014-10-27 A | 10 | 100% |  |  |  |  | start no earlier than 2014-10-27 | Chris; Kyle; Matt; Michael | 32h | 32h |
| 12 | 1.1.2.4 | Submit Project Design Specifications | milestone | 0d | 2014-10-27 A | 2014-10-27 A | 11 | 100% |  |  |  |  | start no earlier than 2014-10-27 | Chris; Kyle; Matt; Michael |  |  |
| 13 | 1.1.3 | **Project Schedule** |  | 5d? | 2014-11-06 A | 2014-11-10 |  | 75% | 1.25d? |  | 24d |  |  |  | 32h | 24h |
| 14 | 1.1.3.1 | Write Project Schedule |  | 3d? | 2014-11-06 A | 2014-11-08 A |  | 100% |  |  |  |  | start no earlier than 2014-11-06 | Michael | 24h | 24h |
| 15 | 1.1.3.2 | Review Project Schedule | milestone | 0d | 2014-11-09 A | 2014-11-09 A | 14 | 100% |  |  |  |  | start no earlier than 2014-11-09 | Matt; Michael |  |  |
| 16 | 1.1.3.3 | Revise Project Schedule |  | 1d? | 2014-11-10 | 2014-11-10 | 15 |  |  |  | 24d | 0d | start no earlier than 2014-11-10 | Michael | 8h |  |
| 17 | 1.1.3.4 | Submit Project Schedule | milestone | 0d | 2014-11-10 | 2014-11-10 | 16 |  |  |  | 24d |  | start no earlier than 2014-11-10 | Chris; Kyle; Matt; Michael |  |  |
| 18 | 1.1.4 | **System Design and Modeling** |  | 5d | 2014-11-13 | 2014-11-17 |  |  |  |  |  |  |  |  | 88h |  |
| 19 | 1.1.4.1 | Write System Design and Modeling |  | 3d | 2014-11-13 | 2014-11-15 |  |  |  |  | 26d | 0d | start no earlier than 2014-11-13 | Chris; Kyle; Matt | 72h |  |
| 20 | 1.1.4.2 | Review System Design and Modeling | milestone | 0d | 2014-11-16 | 2014-11-16 | 19 |  |  |  | 26d | 1d | start no earlier than 2014-11-16 | Chris; Kyle; Matt; Michael |  |  |
| 21 | 1.1.4.3 | Revise System Design and Modeling |  | 1d? | 2014-11-17 | 2014-11-17 | 20 |  |  |  | 25d | 0d | start no earlier than 2014-11-17 | Kyle; Matt | 16h |  |
| 22 | 1.1.4.4 | Submit System Design and Modeling | milestone | 0d | 2014-11-17 | 2014-11-17 | 21 |  |  |  | 25d |  | start no earlier than 2014-11-17 | Chris; Kyle; Matt; Michael |  |  |
| 23 | 1.1.5 | **Test Plan** |  | 2d | 2014-11-22 | 2014-11-24 |  |  |  |  | 11d |  |  |  | 32h |  |
| 24 | 1.1.5.1 | Write Test Plan |  | 1d | 2014-11-22 | 2014-11-22 |  |  |  |  | 11d | 0d | start no earlier than 2014-11-22 | Matt; Michael | 16h |  |
| 25 | 1.1.5.2 | Review Test Plan | milestone | 0d | 2014-11-23 | 2014-11-23 | 24 |  |  |  | 11d | 0d | start no earlier than 2014-11-23 | Chris; Kyle; Matt; Michael |  |  |
| 26 | 1.1.5.3 | Revise Test Plan |  | 1d | 2014-11-23 | 2014-11-23 | 25 |  |  |  | 11d | 0d |  | Matt; Michael | 16h |  |
| 27 | 1.1.5.4 | Submit Test Plan | milestone | 0d | 2014-11-24 | 2014-11-24 | 26 |  |  |  | 11d |  | start no earlier than 2014-11-24 | Chris; Kyle; Matt; Michael |  |  |

| ID | WBS | Task | Type | Duration | Start | Finish | Predecessors | Complete | Remaining | Total slack | Free slack | Constraint | Resources | Work | Actual work |
| --- | --- | --- | --- | --- | --- | --- | --- | --- | --- | --- | --- | --- | --- | --- | --- |
| 28 | 1.2 | **Research and Feasibility** |  | 20d | 2014-10-10 A | 2014-10-29 A |  | 100% |  |  |  |  |  | 200h | 200h |
| 29 | 1.2.1 | MCU Options |  | 5d? | 2014-10-10 A | 2014-10-14 A |  | 100% |  |  |  | finish no earlier than 2014-10-14 | Chris; Kyle | 80h | 80h |
| 30 | 1.2.2 | Decide on CC430 MCU | milestone | 0d | 2014-10-14 A | 2014-10-14 A | 29 | 100% |  |  |  | start no earlier than 2014-10-14 |  |  |  |
| 31 | 1.2.3 | Button Technology Designs |  | 3d | 2014-10-15 A | 2014-10-17 A |  | 100% |  |  |  | start no earlier than 2014-10-15 | Chris | 24h | 24h |
| 32 | 1.2.4 | Resistive Button Prototype |  | 2d | 2014-10-18 A | 2014-10-19 A | 31 | 100% |  |  |  | start no earlier than 2014-10-17 | Chris | 16h | 16h |
| 33 | 1.2.5 | Antenna Geometry |  | 3d | 2014-10-19 A | 2014-10-21 A |  | 100% |  |  |  | finish no earlier than 2014-10-21 | Chris | 24h | 24h |
| 34 | 1.2.6 | Antenna Field Simulation |  | 1d | 2014-10-29 A | 2014-10-29 A | 33 | 100% |  |  |  | start no earlier than 2014-10-29 | Chris | 8h | 8h |
| 35 | 1.2.7 | MCU Programming Interface |  | 3d | 2014-10-26 A | 2014-10-28 A |  | 100% |  |  |  | start no earlier than 2014-10-26 | Chris | 24h | 24h |
| 36 | 1.2.8 | Decide on Code Composer Studio v6 | milestone | 0d | 2014-10-28 A | 2014-10-28 A | 35 | 100% |  |  |  | start no earlier than 2014-10-28 | Chris |  |  |
| 37 | 1.2.9 | GUI Languages |  | 3d | 2014-10-15 A | 2014-10-17 A |  | 100% |  |  |  | finish no earlier than 2014-10-17 | Matt; Michael | 24h | 24h |
| 38 | 1.2.10 | Decide on Python for GUI Language | milestone | 0d | 2014-10-17 A | 2014-10-17 A | 37 | 100% |  |  |  | start no earlier than 2014-10-17 | Matt; Michael |  |  |
| 39 | 1.3 | **Schematic and Layout** |  | 20d? | 2014-10-22 A | 2014-11-10 |  | 92% | 1.67d? | 32d |  |  |  | 448h | 416h |
| 40 | 1.3.1 | **Schematic** |  | 12d? | 2014-10-22 A | 2014-11-02 A |  | 100% |  |  |  |  |  | 224h | 224h |
| 41 | 1.3.1.1 | Symbol Creation |  | 3d? | 2014-10-22 A | 2014-10-24 A |  | 100% |  |  |  | finish no earlier than 2014-10-24 | Chris; Kyle | 48h | 48h |
| 42 | 1.3.1.2 | Schematic Design |  | 5d? | 2014-10-25 A | 2014-10-29 A | 41 | 100% |  |  |  | finish no earlier than 2014-10-26 | Chris; Kyle | 80h | 80h |
| 43 | 1.3.1.3 | Schematic Design Review |  | 1d? | 2014-10-30 A | 2014-10-30 A | 42 | 100% |  |  |  | start no earlier than 2014-10-27 | Chris; Kyle; Matt; Michael | 32h | 32h |
| 44 | 1.3.1.4 | Schematic Design Revision |  | 2d? | 2014-10-31 A | 2014-11-01 A | 43 | 100% |  |  |  | start no earlier than 2014-10-28 | Chris; Kyle | 32h | 32h |
| 45 | 1.3.1.5 | Final Schematic Design Review |  | 1d? | 2014-11-02 A | 2014-11-02 A | 44 | 100% |  |  |  |  | Chris; Kyle; Matt; Michael | 32h | 32h |
| 46 | 1.3.2 | **Layout** |  | 20d? | 2014-10-22 A | 2014-11-10 |  | 83% | 3.33d? | 32d |  |  |  | 224h | 192h |
| 47 | 1.3.2.1 | Footprint Creation |  | 4d? | 2014-10-22 A | 2014-10-25 A |  | 100% |  |  |  | finish no earlier than 2014-10-25 | Chris; Kyle | 64h | 64h |
| 48 | 1.3.2.2 | Layout Design |  | 3d? | 2014-11-01 A | 2014-11-03 A | 47 | 100% |  |  |  | finish no earlier than 2014-11-03 | Chris; Kyle | 48h | 48h |
| 49 | 1.3.2.3 | Layout Design Review |  | 1d? | 2014-11-04 A | 2014-11-04 A | 48 | 100% |  |  |  |  | Chris; Kyle; Matt; Michael | 32h | 32h |
| 50 | 1.3.2.4 | Layout Design Revision |  | 1d? | 2014-11-05 A | 2014-11-05 A | 49 | 100% |  |  |  |  | Chris; Kyle | 16h | 16h |
| 51 | 1.3.2.5 | Secondary Layout Review |  | 1d? | 2014-11-06 A | 2014-11-06 A | 50 | 100% |  |  |  |  | Chris; Kyle; Matt; Michael | 32h | 32h |
| 52 | 1.3.2.6 | Secondary Layout Revision |  | 2d? | 2014-11-09 | 2014-11-10 | 51 |  |  | 32d | 0d | start no earlier than 2014-11-09 | Chris; Kyle | 32h |  |
| 53 | 1.3.2.7 | Boards to Fab | milestone | 0d | 2014-11-10 | 2014-11-10 | 52 |  |  | 32d |  | start no earlier than 2014-11-10 |  |  |  |

| ID | WBS | Task | Type | Duration | Start | Finish | Predecessors | Complete | Remaining | Total slack | Free slack | Constraint | Resources | Work | Actual work |
| --- | --- | --- | --- | --- | --- | --- | --- | --- | --- | --- | --- | --- | --- | --- | --- |
| 54 | 1.4 | **Assembly and Debug** |  | 6d? | 2014-11-17 | 2014-11-22 |  |  |  | 20d |  |  |  | 64h |  |
| 55 | 1.4.1 | Boards Back From Fab | milestone | 0d | 2014-11-17 | 2014-11-17 |  |  |  | 20d | 0d | start no earlier than 2014-11-17 |  |  |  |
| 56 | 1.4.2 | RF Matching Network Calibration |  | 2d? | 2014-11-17 | 2014-11-18 | 55 |  |  | 20d | 0d | start no earlier than 2014-11-17 | Chris | 16h |  |
| 57 | 1.4.3 | Stencil generation |  | 1d? | 2014-11-19 | 2014-11-19 | 56 |  |  | 20d | 0d |  | Kyle; Matt | 16h |  |
| 58 | 1.4.4 | Board Stuff & Reflow |  | 2d | 2014-11-20 | 2014-11-21 | 57 |  |  | 20d | 0d |  | Matt; Kyle | 32h |  |
| 59 | 1.4.5 | MCU "Hello, World!" |  | 1d? | 2014-11-22 | 2014-11-22 | 58 |  |  | 20d |  |  |  |  |  |
| 60 | 1.5 | **GUI and Host-PC Programming** |  | 24d? | 2014-10-29 A | 2014-11-21 |  | 42% | 14d? | 21d |  |  |  | 264h | 152h |
| 61 | 1.5.1 | Design GUI Layout |  | 4d? | 2014-10-29 A | 2014-11-01 A |  | 100% |  |  |  | finish no earlier than 2014-11-01 | Matt; Michael | 64h | 64h |
| 62 | 1.5.2 | Review GUI Layout |  | 1d? | 2014-11-02 A | 2014-11-02 A | 61 | 100% |  |  |  | start no earlier than 2014-11-02 | Chris; Kyle; Matt; Michael | 32h | 32h |
| 63 | 1.5.3 | Revise GUI Layout |  | 2d | 2014-11-03 A | 2014-11-04 A | 62 | 100% |  |  |  |  | Matt; Michael | 32h | 32h |
| 64 | 1.5.4 | Prototype Basic GUI |  | 3d | 2014-11-05 A | 2014-11-07 A | 63 | 100% |  |  |  |  | Michael | 24h | 24h |
| 65 | 1.5.5 | Add Menu Features |  | 5d? | 2014-11-08 | 2014-11-12 | 64 |  |  | 21d | 0d | start no earlier than 2014-11-08 | Matt | 40h |  |
| 66 | 1.5.6 | Establish Serial Comm via USB to Base Station |  | 5d | 2014-11-13 | 2014-11-17 | 65 |  |  | 21d | 0d |  | Michael | 40h |  |
| 67 | 1.5.7 | Program Packet Parser |  | 4d | 2014-11-18 | 2014-11-21 | 66 |  |  | 21d |  |  | Michael | 32h |  |
| 68 | 1.6 | **Low-Level Software** |  | 8d | 2014-11-19 | 2014-11-26 |  |  |  |  |  |  |  | 72h |  |
| 69 | 1.6.1 | Establish Communication Between Satellite Unit and Base Station |  | 3d? | 2014-11-19 | 2014-11-21 |  |  |  | 2d | 0d | finish no earlier than 2014-11-21 | Chris | 24h |  |
| 70 | 1.6.2 | Develop Code for Taking Button Input on Satellite Board |  | 3d | 2014-11-22 | 2014-11-24 | 69 |  |  | 2d |  |  | Kyle; Chris | 48h |  |
| 71 | 1.7 | **Testing** |  | 16d | 2014-11-25 | 2014-12-10 |  |  |  |  |  |  |  | 304h |  |
| 72 | 1.7.1 | Test Communication between Satellite and Base Station |  | 2d | 2014-11-25 | 2014-11-26 |  |  |  | 0d |  | start no earlier than 2014-11-25 | Chris; Kyle | 32h |  |
| 73 | 1.7.2 | Test Hardware |  | 4d | 2014-11-27 | 2014-11-30 | 72 |  |  | 0d |  | finish no earlier than 2014-11-30 | Kyle; Chris | 64h |  |
| 74 | 1.7.3 | Test Software |  | 4d | 2014-12-01 | 2014-12-04 | 73 |  |  | 0d |  | finish no earlier than 2014-11-30 | Matt; Michael | 64h |  |
| 75 | 1.7.4 | Test Entire System |  | 3d | 2014-12-05 | 2014-12-07 | 74 |  |  | 0d |  |  | Matt; Michael | 48h |  |
| 76 | 1.7.5 | Final Debug and Testing |  | 3d | 2014-12-08 | 2014-12-10 | 75 |  |  | 0d |  |  | Chris; Kyle; Matt; Michael | 96h |  |
| 77 | 1.8 | **Presentation** |  | 10d | 2014-12-03 | 2014-12-12 |  |  |  |  |  |  |  | 96h |  |
| 78 | 1.8.1 | Compile Material for Presentation |  | 2d | 2014-12-03 | 2014-12-04 |  |  |  | 5d | 0d |  | Chris; Kyle | 32h |  |
| 79 | 1.8.2 | Format Presentation |  | 2d | 2014-12-05 | 2014-12-06 | 78 |  |  | 5d | 4d |  | Chris; Kyle | 32h |  |
| 80 | 1.8.3 | Practice Presentation |  | 1d | 2014-12-11 | 2014-12-11 | 79 |  |  | 1d | 0d | start no earlier than 2014-12-11 | Chris; Kyle; Matt; Michael | 32h |  |
| 81 | 1.8.4 | Demo | milestone | 0d | 2014-12-11 | 2014-12-11 | 80 |  |  | 1d |  |  | Chris; Kyle; Matt; Michael |  |  |
